# Cronograma

Schedule from MS Project, 2015-09-14 to 2015-12-14, 2 hours a day, costs in $, A marks actual dates.

## Calendars

- Estándar: Mon-Fri 21:00-24:00; Sat-Sun off.

## Resources

| Resource | Rate |
| --- | --- |
| Consultor1 | 50000 |
| Consultor2 | 50000 |
| Consultor3 | 50000 |
| Consultor4 | 50000 |

## Schedule

| ID | WBS | Task | Duration | Start | Finish | Predecessors | Complete | Remaining | Total slack | Resources | Work | Actual work | Cost | Actual cost |
| --- | --- | --- | --- | --- | --- | --- | --- | --- | --- | --- | --- | --- | --- | --- |
| 1 | 1 | **Gestion de empleados** | 98d? | 2015-09-14 A | 2015-12-14 |  | 66% | 32.85d? | 0d |  | 401h | 266.6h | 20,050,000 | 13,330,000 |
| 2 | 1.1 | **Inicio** | 4d | 2015-09-14 A | 2015-09-16 A |  | 100% |  |  |  | 8h | 8h | 400,000 | 400,000 |
| 3 | 1.1.1 | Acercamiento Compañía | 5h | 2015-09-14 A | 2015-09-15 A |  | 100% |  |  | Consultor1 | 5h | 5h | 250,000 | 250,000 |
| 4 | 1.1.2 | Acta de inicio proyecto | 3h | 2015-09-15 A | 2015-09-16 A | 3 | 100% |  |  | Consultor2 | 3h | 3h | 150,000 | 150,000 |
| 5 | 1.2 | **Análisis** | 16d? | 2015-09-16 A | 2015-10-01 A | 2 | 100% |  |  |  | 38h | 38h | 1,900,000 | 1,900,000 |
| 6 | 1.2.1 | Reunion levantamiento | 12h | 2015-09-16 A | 2015-09-22 A |  | 100% |  |  | Consultor2 | 12h | 12h | 600,000 | 600,000 |
| 7 | 1.2.2 | Documentacion especificacion | 6h | 2015-09-22 A | 2015-09-24 A | 6 | 100% |  |  | Consultor3 | 6h | 6h | 300,000 | 300,000 |
| 8 | 1.2.3 | Diagramas de caso de uso | 12h | 2015-09-22 A | 2015-09-28 A | 6 | 100% |  |  | Consultor4 | 12h | 12h | 600,000 | 600,000 |
| 9 | 1.2.4 | Acta de entrega fase | 4d? | 2015-09-28 A | 2015-10-01 A | 8, 7 | 100% |  |  | Consultor1 | 8h | 8h | 400,000 | 400,000 |
| 10 | 1.3 | **Diseño** | 29.5d | 2015-09-28 A | 2015-10-26 |  | 77% | 6.9d | 52.5d |  | 118h | 90.4h | 5,900,000 | 4,520,000 |
| 11 | 1.3.1 | **Aplicación** | 17.5d | 2015-09-28 A | 2015-10-14 |  | 87% | 2.28d | 64.5d |  | 43h | 37.4h | 2,150,000 | 1,870,000 |
| 12 | 1.3.1.1 | Arquitectura Solucion | 6h | 2015-09-28 A | 2015-09-30 A | 8, 7 | 100% |  |  | Consultor2 | 6h | 6h | 300,000 | 300,000 |
| 13 | 1.3.1.2 | Diagrama de clases | 22h | 2015-09-30 A | 2015-10-10 A | 12 | 100% |  |  | Consultor3 | 22h | 22h | 1,100,000 | 1,100,000 |
| 14 | 1.3.1.3 | Diagrama de base de datos | 8h | 2015-09-30 A | 2015-10-05 A | 12 | 100% |  |  | Consultor4 | 8h | 8h | 400,000 | 400,000 |
| 15 | 1.3.1.4 | Diagrama de secuencia | 7h | 2015-10-12 A | 2015-10-14 | 13 | 20% | 5.6h | 64.5d | Consultor1 | 7h | 1.4h | 350,000 | 70,000 |
| 16 | 1.3.2 | **Diseño de pruebas** | 13d | 2015-10-05 | 2015-10-16 |  |  |  | 62d |  | 22h |  | 1,100,000 |  |
| 17 | 1.3.2.1 | Integracion | 12h | 2015-10-12 | 2015-10-16 | 13 |  |  | 62d | Consultor3 | 12h |  | 600,000 |  |
| 18 | 1.3.2.2 | Usuario | 10h | 2015-10-05 | 2015-10-08 | 14 |  |  | 70d | Consultor4 | 10h |  | 500,000 |  |
| 19 | 1.3.3 | **Prototipo** | 23.5d | 2015-09-30 A | 2015-10-22 A |  | 100% |  |  |  | 47h | 47h | 2,350,000 | 2,350,000 |
| 20 | 1.3.3.1 | General | 7h | 2015-10-14 A | 2015-10-16 A | 15 | 100% |  |  | Consultor1 | 7h | 7h | 350,000 | 350,000 |
| 21 | 1.3.3.2 | Login | 4h | 2015-10-08 A | 2015-10-10 A | 18 | 100% |  |  | Consultor4 | 4h | 4h | 200,000 | 200,000 |
| 22 | 1.3.3.3 | Menu Principal | 5h | 2015-09-30 A | 2015-10-02 A | 12 | 100% |  |  | Consultor2 | 5h | 5h | 250,000 | 250,000 |
| 23 | 1.3.3.4 | Usuario CRUD | 6h | 2015-10-16 A | 2015-10-20 A | 20 | 100% |  |  | Consultor1 | 6h | 6h | 300,000 | 300,000 |
| 24 | 1.3.3.5 | Recordar Contraseña | 5h | 2015-10-02 A | 2015-10-06 A | 22 | 100% |  |  | Consultor2 | 5h | 5h | 250,000 | 250,000 |
| 25 | 1.3.3.6 | Empleado CRUD | 5h | 2015-10-16 A | 2015-10-19 A | 17 | 100% |  |  | Consultor3 | 5h | 5h | 250,000 | 250,000 |
| 26 | 1.3.3.7 | Creacion y actualizacion masiva | 5h | 2015-10-12 A | 2015-10-13 A | 21 | 100% |  |  | Consultor4 | 5h | 5h | 250,000 | 250,000 |
| 27 | 1.3.3.8 | Informes | 5h | 2015-10-20 A | 2015-10-22 A | 23 | 100% |  |  | Consultor1 | 5h | 5h | 250,000 | 250,000 |
| 28 | 1.3.3.9 | Certificado | 5h | 2015-10-06 A | 2015-10-07 A | 24 | 100% |  |  | Consultor2 | 5h | 5h | 250,000 | 250,000 |

| ID | WBS | Task | Duration | Start | Finish | Predecessors | Complete | Remaining | Total slack | Free slack | Resources | Work | Actual work | Cost | Actual cost |
| --- | --- | --- | --- | --- | --- | --- | --- | --- | --- | --- | --- | --- | --- | --- | --- |
| 29 | 1.3.4 | **Documentar fase** | 3d | 2015-10-22 A | 2015-10-26 A | 19 | 100% |  |  |  |  | 6h | 6h | 300,000 | 300,000 |
| 30 | 1.3.4.1 | Acta Entrega Fase | 6h | 2015-10-22 A | 2015-10-26 A |  | 100% |  |  |  | Consultor4 | 6h | 6h | 300,000 | 300,000 |
| 31 | 1.4 | **Implementacion** | 61d | 2015-10-07 A | 2015-12-03 |  | 60% | 24.23d | 0d |  |  | 216h | 130.2h | 10,800,000 | 6,510,000 |
| 32 | 1.4.1 | **Persistencia** | 11d | 2015-10-19 A | 2015-10-29 A |  | 100% |  |  |  |  | 26h | 26h | 1,300,000 | 1,300,000 |
| 33 | 1.4.1.1 | Implementacion Base de datos | 10h | 2015-10-19 A | 2015-10-23 A | 25 | 100% |  |  |  | Consultor3 | 10h | 10h | 500,000 | 500,000 |
| 34 | 1.4.1.2 | Creacion entidades | 8h | 2015-10-26 A | 2015-10-29 A | 33, 30 | 100% |  |  |  | Consultor4 | 8h | 8h | 400,000 | 400,000 |
| 35 | 1.4.1.3 | Conexión bd | 8h | 2015-10-23 A | 2015-10-27 A | 33 | 100% |  |  |  | Consultor1 | 8h | 8h | 400,000 | 400,000 |
| 36 | 1.4.2 | **Logica** | 38d | 2015-10-07 A | 2015-11-12 |  | 67% | 12.49d | 23d |  |  | 112h | 75.2h | 5,600,000 | 3,760,000 |
| 37 | 1.4.2.1 | Validador | 36h | 2015-10-07 A | 2015-10-23 A | 28 | 100% |  |  |  | Consultor2 | 36h | 36h | 1,800,000 | 1,800,000 |
| 38 | 1.4.2.2 | Report Manager | 36h | 2015-10-23 A | 2015-11-10 | 33 | 20% | 28.8h | 8.5d | 0d | Consultor3 | 36h | 7.2h | 1,800,000 | 360,000 |
| 39 | 1.4.2.3 | Fachada | 30h | 2015-10-29 A | 2015-11-12 A | 34, 35 | 100% |  |  |  | Consultor4 | 30h | 30h | 1,500,000 | 1,500,000 |
| 40 | 1.4.2.4 | Masivo | 10h | 2015-10-27 A | 2015-10-31 | 35 | 20% | 8h | 35d |  | Consultor1 | 10h | 2h | 500,000 | 100,000 |
| 41 | 1.4.3 | **Presentacion** | 31d | 2015-10-23 A | 2015-11-23 |  | 54% | 14.35d | 0d |  |  | 54h | 29h | 2,700,000 | 1,450,000 |
| 42 | 1.4.3.1 | Login | 7h | 2015-11-12 A | 2015-11-16 A | 39 | 100% |  |  |  | Consultor4 | 7h | 7h | 350,000 | 350,000 |
| 43 | 1.4.3.2 | Menu Principal | 7h | 2015-11-02 A | 2015-11-04 A | 40 | 100% |  |  |  | Consultor1 | 7h | 7h | 350,000 | 350,000 |
| 44 | 1.4.3.3 | CRUD Usuario | 7h | 2015-10-23 A | 2015-10-28 A | 37 | 100% |  |  |  | Consultor2 | 7h | 7h | 350,000 | 350,000 |
| 45 | 1.4.3.4 | Recordar Contraseña | 4h | 2015-11-10 | 2015-11-11 | 38 |  |  | 8.5d | 0d | Consultor3 | 4h |  | 200,000 |  |
| 46 | 1.4.3.5 | CRUD Empleado | 8h | 2015-11-16 A | 2015-11-19 A | 42 | 100% |  |  |  | Consultor4 | 8h | 8h | 400,000 | 400,000 |
| 47 | 1.4.3.6 | Cargue y Actualizacion Masiva | 7h | 2015-11-04 | 2015-11-06 | 43 |  |  | 16d |  | Consultor1 | 7h |  | 350,000 |  |
| 48 | 1.4.3.7 | Informes | 7h | 2015-11-11 | 2015-11-13 | 45 |  |  | 8.5d |  | Consultor3 | 7h |  | 350,000 |  |
| 49 | 1.4.3.8 | Certificado | 7h | 2015-11-19 | 2015-11-23 | 46 |  |  | 0d |  | Consultor4 | 7h |  | 350,000 |  |
| 50 | 1.4.4 | Pruebas Unitarias | 24h | 2015-11-23 | 2015-12-03 | 41 |  |  | 0d |  | Consultor1 | 24h |  | 1,200,000 |  |
| 51 | 1.5 | **Pruebas** | 8.5d | 2015-12-03 | 2015-12-11 |  |  |  | 0d |  |  | 17h |  | 850,000 |  |
| 52 | 1.5.1 | Integrales | 16h | 2015-12-03 | 2015-12-10 | 31 |  |  | 0d |  | Consultor4 | 16h |  | 800,000 |  |
| 53 | 1.5.2 | Tecnicas | 1h | 2015-12-10 | 2015-12-11 | 52 |  |  | 0d |  | Consultor4 | 1h |  | 50,000 |  |

| ID | WBS | Task | Duration | Start | Finish | Predecessors | Total slack | Resources | Work | Cost |
| --- | --- | --- | --- | --- | --- | --- | --- | --- | --- | --- |
| 54 | 1.6 | **Despligue** | 2d | 2015-12-11 | 2015-12-14 | 51 | 0d |  | 4h | 200,000 |
| 55 | 1.6.1 | Acta de despliegue | 4h | 2015-12-11 | 2015-12-14 |  | 0d | Consultor4 | 4h | 200,000 |
